# CronogramaProjetoEvolucionario

Schedule from MS Project, 2023-03-14 to 2024-01-16.

## Calendars

- Standard: Mon-Fri 08:00-12:00, 13:00-17:00; Sat-Sun off.

## Resources

| Resource |
| --- |
| Maria; Joao |
| Maria |
| João |
| Henk |
| Laura |
| Pedro |
| Bianca |
| Rupert |
| Lucas |
| Rene |
| Rubia |
| Lima |
| Dono do produto (representante dos usuários) |
| Parducci |
| Rodrigues |
| Pereira |
| Mariano |

## Schedule

| ID | WBS | Task | Duration | Start | Finish | Predecessors | Total slack | Constraint | Resources | Work |
| --- | --- | --- | --- | --- | --- | --- | --- | --- | --- | --- |
| 1 | 1 | **Projeto Novo Sistema Comercial (usando modelo Prototipação Evolucionária)** | 221d? | 2023-03-14 | 2024-01-16 |  | 0d |  |  | 45120h |
| 2 | 1.1 | **Fase de Estudo** | 1d? | 2023-03-14 | 2023-03-14 |  | 220d |  |  |  |
| 3 | 1.1.1 | Avaliar a possibilidade de modularização do projeto | 1d? | 2023-03-14 | 2023-03-14 |  | 220d |  |  |  |
| 4 | 1.1.2 | Definir os módulos/frentes de projeto | 1d? | 2023-03-14 | 2023-03-14 |  | 220d |  |  |  |
| 5 | 1.2 | **Módulo Vendas** | 221d? | 2023-03-14 | 2024-01-16 |  | 0d |  |  | 9024h |
| 6 | 1.2.1 | **Fase de Análise** | 27d | 2023-03-20 | 2023-04-25 |  | 0d |  |  | 296h |
| 7 | 1.2.1.1 | Registrar objetivos de negócio | 5d | 2023-03-20 | 2023-03-24 |  | 0d | start no earlier than 2023-03-20 | Maria; João | 80h |
| 8 | 1.2.1.2 | Estudar sistemas existentes | 15d | 2023-03-27 | 2023-04-14 | 7 | 0d | start no earlier than 2023-03-20 | Maria | 120h |
| 9 | 1.2.1.3 | Listar requisitos do sistema | 3d | 2023-04-17 | 2023-04-19 | 8 | 0d |  | João; Maria | 48h |
| 10 | 1.2.1.4 | Analisar a viabilidade | 1d | 2023-04-20 | 2023-04-20 | 9 | 0d |  | João; Maria | 16h |
| 11 | 1.2.1.5 | Priorizar requisitos | 1d | 2023-04-21 | 2023-04-21 | 10 | 0d |  | João; Maria | 16h |
| 12 | 1.2.1.6 | Documentar a visão de escopo do projeto | 2d | 2023-04-24 | 2023-04-25 | 11 | 0d |  | Maria | 16h |
| 13 | 1.2.2 | **Fase de Desenho** | 45d | 2023-04-26 | 2023-06-27 |  | 0d |  |  | 720h |
| 14 | 1.2.2.1 | Desenho lógico | 30d | 2023-04-26 | 2023-06-06 | 12 | 0d |  | Henk; Laura | 480h |
| 15 | 1.2.2.2 | Desenho físico | 15d | 2023-06-07 | 2023-06-27 | 14 | 0d |  | Henk; Laura | 240h |
| 16 | 1.2.3 | **Fase de Implementação/Construção** | 60d | 2023-06-28 | 2023-09-19 |  | 0d |  |  | 5280h |
| 17 | 1.2.3.1 | Construir banco de dados | 60d | 2023-06-28 | 2023-09-19 | 15 | 85d |  | Pedro; Bianca; Rupert | 1440h |
| 18 | 1.2.3.2 | Construir software de aplicação | 60d | 2023-06-28 | 2023-09-19 | 15 | 85d |  | Lucas; Rene; Rubia; Lima | 1920h |
| 19 | 1.2.3.3 | Testes unitários de programas | 60d | 2023-06-28 | 2023-09-19 | 15 | 0d |  | Lucas; Rene; Rubia; Lima | 1920h |
| 20 | 1.2.4 | **Fase de Teste** | 31d | 2023-09-20 | 2023-11-01 |  | 0d |  |  | 2168h |
| 21 | 1.2.4.1 | Testes integrados feitos por TI | 10d | 2023-09-20 | 2023-10-03 | 19 | 0d |  | João; Maria; Henk; Laura | 320h |
| 22 | 1.2.4.2 | Testes de homologação pelo usuário | 20d | 2023-10-04 | 2023-10-31 | 21 | 0d |  | Dono do produto (representante dos usuários) | 160h |
| 23 | 1.2.4.3 | Correção de BUGs | 30d | 2023-09-20 | 2023-10-31 | 19 | 55d |  | Lucas; Rene; Rubia; Lima; Bianca; Pedro; Rupert | 1680h |
| 24 | 1.2.4.4 | Registro da aprovação final do patrocinador do projeto | 1d | 2023-11-01 | 2023-11-01 | 22 | 0d |  | Parducci | 8h |

| ID | WBS | Task | Duration | Start | Finish | Predecessors | Total slack | Constraint | Resources | Work |
| --- | --- | --- | --- | --- | --- | --- | --- | --- | --- | --- |
| 25 | 1.2.5 | **Fase de Implantação** | 54d | 2023-11-02 | 2024-01-16 |  | 0d |  |  | 560h |
| 26 | 1.2.5.1 | Treinamento de usuários | 50d | 2023-11-02 | 2024-01-10 | 24 | 0d |  | Henk | 400h |
| 27 | 1.2.5.2 | Treinamento da equipe de operações e suporte de TI | 10d | 2023-11-02 | 2023-11-15 | 24 | 40d |  | Laura | 80h |
| 28 | 1.2.5.3 | Instalar nova aplicação | 1d | 2024-01-11 | 2024-01-11 | 26, 27 | 0d |  | Rodrigues; Pereira; Mariano | 24h |
| 29 | 1.2.5.4 | Migrar dados do sistema legado | 1d | 2024-01-12 | 2024-01-12 | 28 | 0d |  | Rodrigues; Pereira; Mariano | 24h |
| 30 | 1.2.5.5 | Desativar o sistema antigo (legado) | 1d | 2024-01-15 | 2024-01-15 | 29 | 0d |  | Rodrigues; Pereira; Mariano | 24h |
| 31 | 1.2.5.6 | Emitir termo de aceite e encerramento do projeto | 1d | 2024-01-16 | 2024-01-16 | 30 | 0d |  | Parducci | 8h |
| 32 | 1.2.6 | **Fase de Integração** | 1d? | 2023-03-14 | 2023-03-14 |  | 220d |  |  |  |
| 33 | 1.2.6.1 | Ajustar programas para comunicarem entre si, integrando informações | 1d? | 2023-03-14 | 2023-03-14 |  | 220d |  |  |  |
| 34 | 1.2.6.2 | Testar integrações | 1d? | 2023-03-14 | 2023-03-14 |  | 220d |  |  |  |
| 35 | 1.2.6.3 | Liberar o uso do sistema integrado | 1d? | 2023-03-14 | 2023-03-14 |  | 220d |  |  |  |
| 36 | 1.2.6.4 | Treinamento complementar para ensinar o trabalho integrado com uso do sistema | 1d? | 2023-03-14 | 2023-03-14 |  | 220d |  |  |  |
| 37 | 1.2.6.5 | Emitir aceite da integração | 1d? | 2023-03-14 | 2023-03-14 |  | 220d |  |  |  |
| 38 | 1.3 | **Módulo Estoques** | 221d? | 2023-03-14 | 2024-01-16 |  | 0d |  |  | 9024h |
| 39 | 1.3.1 | **Fase de Análise** | 27d | 2023-03-20 | 2023-04-25 |  | 0d |  |  | 296h |
| 40 | 1.3.1.1 | Registrar objetivos de negócio | 5d | 2023-03-20 | 2023-03-24 |  | 0d | start no earlier than 2023-03-20 | Maria; João | 80h |
| 41 | 1.3.1.2 | Estudar sistemas existentes | 15d | 2023-03-27 | 2023-04-14 | 40 | 0d | start no earlier than 2023-03-20 | Maria | 120h |
| 42 | 1.3.1.3 | Listar requisitos do sistema | 3d | 2023-04-17 | 2023-04-19 | 41 | 0d |  | João; Maria | 48h |
| 43 | 1.3.1.4 | Analisar a viabilidade | 1d | 2023-04-20 | 2023-04-20 | 42 | 0d |  | João; Maria | 16h |
| 44 | 1.3.1.5 | Priorizar requisitos | 1d | 2023-04-21 | 2023-04-21 | 43 | 0d |  | João; Maria | 16h |
| 45 | 1.3.1.6 | Documentar a visão de escopo do projeto | 2d | 2023-04-24 | 2023-04-25 | 44 | 0d |  | Maria | 16h |
| 46 | 1.3.2 | **Fase de Desenho** | 45d | 2023-04-26 | 2023-06-27 |  | 0d |  |  | 720h |
| 47 | 1.3.2.1 | Desenho lógico | 30d | 2023-04-26 | 2023-06-06 | 45 | 0d |  | Henk; Laura | 480h |
| 48 | 1.3.2.2 | Desenho físico | 15d | 2023-06-07 | 2023-06-27 | 47 | 0d |  | Henk; Laura | 240h |

| ID | WBS | Task | Duration | Start | Finish | Predecessors | Total slack | Constraint | Resources | Work |
| --- | --- | --- | --- | --- | --- | --- | --- | --- | --- | --- |
| 49 | 1.3.3 | **Fase de Implementação/Construção** | 60d | 2023-06-28 | 2023-09-19 |  | 0d |  |  | 5280h |
| 50 | 1.3.3.1 | Construir banco de dados | 60d | 2023-06-28 | 2023-09-19 | 48 | 85d |  | Pedro; Bianca; Rupert | 1440h |
| 51 | 1.3.3.2 | Construir software de aplicação | 60d | 2023-06-28 | 2023-09-19 | 48 | 85d |  | Lucas; Rene; Rubia; Lima | 1920h |
| 52 | 1.3.3.3 | Testes unitários de programas | 60d | 2023-06-28 | 2023-09-19 | 48 | 0d |  | Lucas; Rene; Rubia; Lima | 1920h |
| 53 | 1.3.4 | **Fase de Teste** | 31d | 2023-09-20 | 2023-11-01 |  | 0d |  |  | 2168h |
| 54 | 1.3.4.1 | Testes integrados feitos por TI | 10d | 2023-09-20 | 2023-10-03 | 52 | 0d |  | João; Maria; Henk; Laura | 320h |
| 55 | 1.3.4.2 | Testes de homologação pelo usuário | 20d | 2023-10-04 | 2023-10-31 | 54 | 0d |  | Dono do produto (representante dos usuários) | 160h |
| 56 | 1.3.4.3 | Correção de BUGs | 30d | 2023-09-20 | 2023-10-31 | 52 | 55d |  | Lucas; Rene; Rubia; Lima; Bianca; Pedro; Rupert | 1680h |
| 57 | 1.3.4.4 | Registro da aprovação final do patrocinador do projeto | 1d | 2023-11-01 | 2023-11-01 | 55 | 0d |  | Parducci | 8h |
| 58 | 1.3.5 | **Fase de Implantação** | 54d | 2023-11-02 | 2024-01-16 |  | 0d |  |  | 560h |
| 59 | 1.3.5.1 | Treinamento de usuários | 50d | 2023-11-02 | 2024-01-10 | 57 | 0d |  | Henk | 400h |
| 60 | 1.3.5.2 | Treinamento da equipe de operações e suporte de TI | 10d | 2023-11-02 | 2023-11-15 | 57 | 40d |  | Laura | 80h |
| 61 | 1.3.5.3 | Instalar nova aplicação | 1d | 2024-01-11 | 2024-01-11 | 59, 60 | 0d |  | Rodrigues; Pereira; Mariano | 24h |
| 62 | 1.3.5.4 | Migrar dados do sistema legado | 1d | 2024-01-12 | 2024-01-12 | 61 | 0d |  | Rodrigues; Pereira; Mariano | 24h |
| 63 | 1.3.5.5 | Desativar o sistema antigo (legado) | 1d | 2024-01-15 | 2024-01-15 | 62 | 0d |  | Rodrigues; Pereira; Mariano | 24h |
| 64 | 1.3.5.6 | Emitir termo de aceite e encerramento do projeto | 1d | 2024-01-16 | 2024-01-16 | 63 | 0d |  | Parducci | 8h |
| 65 | 1.3.6 | **Fase de Integração** | 1d? | 2023-03-14 | 2023-03-14 |  | 220d |  |  |  |
| 66 | 1.3.6.1 | Ajustar programas para comunicarem entre si, integrando informações | 1d? | 2023-03-14 | 2023-03-14 |  | 220d |  |  |  |
| 67 | 1.3.6.2 | Testar integrações | 1d? | 2023-03-14 | 2023-03-14 |  | 220d |  |  |  |
| 68 | 1.3.6.3 | Liberar o uso do sistema integrado | 1d? | 2023-03-14 | 2023-03-14 |  | 220d |  |  |  |
| 69 | 1.3.6.4 | Treinamento complementar para ensinar o trabalho integrado com uso do sistema | 1d? | 2023-03-14 | 2023-03-14 |  | 220d |  |  |  |
| 70 | 1.3.6.5 | Emitir aceite da integração | 1d? | 2023-03-14 | 2023-03-14 |  | 220d |  |  |  |
| 71 | 1.4 | **Módulo RH** | 221d? | 2023-03-14 | 2024-01-16 |  | 0d |  |  | 27072h |
| 72 | 1.4.1 | **Transação de cadastramento de vendedores (funcionários)** | 221d? | 2023-03-14 | 2024-01-16 |  | 0d |  |  | 9024h |
| 73 | 1.4.1.1 | **Fase de Análise** | 27d | 2023-03-20 | 2023-04-25 |  | 0d |  |  | 296h |
| 74 | 1.4.1.1.1 | Registrar objetivos de negócio | 5d | 2023-03-20 | 2023-03-24 |  | 0d | start no earlier than 2023-03-20 | Maria; João | 80h |
| 75 | 1.4.1.1.2 | Estudar sistemas existentes | 15d | 2023-03-27 | 2023-04-14 | 74 | 0d | start no earlier than 2023-03-20 | Maria | 120h |
| 76 | 1.4.1.1.3 | Listar requisitos do sistema | 3d | 2023-04-17 | 2023-04-19 | 75 | 0d |  | João; Maria | 48h |
| 77 | 1.4.1.1.4 | Analisar a viabilidade | 1d | 2023-04-20 | 2023-04-20 | 76 | 0d |  | João; Maria | 16h |
| 78 | 1.4.1.1.5 | Priorizar requisitos | 1d | 2023-04-21 | 2023-04-21 | 77 | 0d |  | João; Maria | 16h |
| 79 | 1.4.1.1.6 | Documentar a visão de escopo do projeto | 2d | 2023-04-24 | 2023-04-25 | 78 | 0d |  | Maria | 16h |

| ID | WBS | Task | Duration | Start | Finish | Predecessors | Total slack | Resources | Work |
| --- | --- | --- | --- | --- | --- | --- | --- | --- | --- |
| 80 | 1.4.1.2 | **Fase de Desenho (fazer protótipo)** | 45d | 2023-04-26 | 2023-06-27 |  | 0d |  | 720h |
| 81 | 1.4.1.2.1 | Desenho lógico | 30d | 2023-04-26 | 2023-06-06 | 79 | 0d | Henk; Laura | 480h |
| 82 | 1.4.1.2.2 | Desenho físico | 15d | 2023-06-07 | 2023-06-27 | 81 | 0d | Henk; Laura | 240h |
| 83 | 1.4.1.3 | **Fase de Implementação/Construção** | 60d | 2023-06-28 | 2023-09-19 |  | 0d |  | 5280h |
| 84 | 1.4.1.3.1 | Construir banco de dados | 60d | 2023-06-28 | 2023-09-19 | 82 | 85d | Pedro; Bianca; Rupert | 1440h |
| 85 | 1.4.1.3.2 | Construir software de aplicação | 60d | 2023-06-28 | 2023-09-19 | 82 | 85d | Lucas; Rene; Rubia; Lima | 1920h |
| 86 | 1.4.1.3.3 | Testes unitários de programas | 60d | 2023-06-28 | 2023-09-19 | 82 | 0d | Lucas; Rene; Rubia; Lima | 1920h |
| 87 | 1.4.1.4 | **Fase de Teste** | 31d | 2023-09-20 | 2023-11-01 |  | 0d |  | 2168h |
| 88 | 1.4.1.4.1 | Testes integrados feitos por TI | 10d | 2023-09-20 | 2023-10-03 | 86 | 0d | João; Maria; Henk; Laura | 320h |
| 89 | 1.4.1.4.2 | Testes de homologação pelo usuário | 20d | 2023-10-04 | 2023-10-31 | 88 | 0d | Dono do produto (representante dos usuários) | 160h |
| 90 | 1.4.1.4.3 | Correção de BUGs | 30d | 2023-09-20 | 2023-10-31 | 86 | 55d | Lucas; Rene; Rubia; Lima; Bianca; Pedro; Rupert | 1680h |
| 91 | 1.4.1.4.4 | Registro da aprovação final do patrocinador do projeto | 1d | 2023-11-01 | 2023-11-01 | 89 | 0d | Parducci | 8h |
| 92 | 1.4.1.5 | **Fase de Implantação** | 54d | 2023-11-02 | 2024-01-16 |  | 0d |  | 560h |
| 93 | 1.4.1.5.1 | Treinamento de usuários | 50d | 2023-11-02 | 2024-01-10 | 91 | 0d | Henk | 400h |
| 94 | 1.4.1.5.2 | Treinamento da equipe de operações e suporte de TI | 10d | 2023-11-02 | 2023-11-15 | 91 | 40d | Laura | 80h |
| 95 | 1.4.1.5.3 | Instalar nova aplicação | 1d | 2024-01-11 | 2024-01-11 | 93, 94 | 0d | Rodrigues; Pereira; Mariano | 24h |
| 96 | 1.4.1.5.4 | Migrar dados do sistema legado | 1d | 2024-01-12 | 2024-01-12 | 95 | 0d | Rodrigues; Pereira; Mariano | 24h |
| 97 | 1.4.1.5.5 | Desativar o sistema antigo (legado) | 1d | 2024-01-15 | 2024-01-15 | 96 | 0d | Rodrigues; Pereira; Mariano | 24h |
| 98 | 1.4.1.5.6 | Emitir termo de aceite e encerramento do projeto | 1d | 2024-01-16 | 2024-01-16 | 97 | 0d | Parducci | 8h |
| 99 | 1.4.1.6 | **Fase de Integração** | 1d? | 2023-03-14 | 2023-03-14 |  | 220d |  |  |
| 100 | 1.4.1.6.1 | Ajustar programas para comunicarem entre si, integrando informações | 1d? | 2023-03-14 | 2023-03-14 |  | 220d |  |  |
| 101 | 1.4.1.6.2 | Testar integrações | 1d? | 2023-03-14 | 2023-03-14 |  | 220d |  |  |
| 102 | 1.4.1.6.3 | Liberar o uso do sistema integrado | 1d? | 2023-03-14 | 2023-03-14 |  | 220d |  |  |
| 103 | 1.4.1.6.4 | Treinamento complementar para ensinar o trabalho integrado com uso do sistema | 1d? | 2023-03-14 | 2023-03-14 |  | 220d |  |  |
| 104 | 1.4.1.6.5 | Emitir aceite da integração | 1d? | 2023-03-14 | 2023-03-14 |  | 220d |  |  |

| ID | WBS | Task | Duration | Start | Finish | Predecessors | Total slack | Constraint | Resources | Work |
| --- | --- | --- | --- | --- | --- | --- | --- | --- | --- | --- |
| 105 | 1.4.2 | **Transação de cálculo de comissão** | 221d? | 2023-03-14 | 2024-01-16 |  | 0d |  |  | 9024h |
| 106 | 1.4.2.1 | **Fase de Análise** | 27d | 2023-03-20 | 2023-04-25 |  | 0d |  |  | 296h |
| 107 | 1.4.2.1.1 | Registrar objetivos de negócio | 5d | 2023-03-20 | 2023-03-24 |  | 0d | start no earlier than 2023-03-20 | Maria; João | 80h |
| 108 | 1.4.2.1.2 | Estudar sistemas existentes | 15d | 2023-03-27 | 2023-04-14 | 107 | 0d | start no earlier than 2023-03-20 | Maria | 120h |
| 109 | 1.4.2.1.3 | Listar requisitos do sistema | 3d | 2023-04-17 | 2023-04-19 | 108 | 0d |  | João; Maria | 48h |
| 110 | 1.4.2.1.4 | Analisar a viabilidade | 1d | 2023-04-20 | 2023-04-20 | 109 | 0d |  | João; Maria | 16h |
| 111 | 1.4.2.1.5 | Priorizar requisitos | 1d | 2023-04-21 | 2023-04-21 | 110 | 0d |  | João; Maria | 16h |
| 112 | 1.4.2.1.6 | Documentar a visão de escopo do projeto | 2d | 2023-04-24 | 2023-04-25 | 111 | 0d |  | Maria | 16h |
| 113 | 1.4.2.2 | **Fase de Desenho (fazer protótipo)** | 45d | 2023-04-26 | 2023-06-27 |  | 0d |  |  | 720h |
| 114 | 1.4.2.2.1 | Desenho lógico | 30d | 2023-04-26 | 2023-06-06 | 112 | 0d |  | Henk; Laura | 480h |
| 115 | 1.4.2.2.2 | Desenho físico | 15d | 2023-06-07 | 2023-06-27 | 114 | 0d |  | Henk; Laura | 240h |
| 116 | 1.4.2.3 | **Fase de Implementação/Construção** | 60d | 2023-06-28 | 2023-09-19 |  | 0d |  |  | 5280h |
| 117 | 1.4.2.3.1 | Construir banco de dados | 60d | 2023-06-28 | 2023-09-19 | 115 | 85d |  | Pedro; Bianca; Rupert | 1440h |
| 118 | 1.4.2.3.2 | Construir software de aplicação | 60d | 2023-06-28 | 2023-09-19 | 115 | 85d |  | Lucas; Rene; Rubia; Lima | 1920h |
| 119 | 1.4.2.3.3 | Testes unitários de programas | 60d | 2023-06-28 | 2023-09-19 | 115 | 0d |  | Lucas; Rene; Rubia; Lima | 1920h |
| 120 | 1.4.2.4 | **Fase de Teste** | 31d | 2023-09-20 | 2023-11-01 |  | 0d |  |  | 2168h |
| 121 | 1.4.2.4.1 | Testes integrados feitos por TI | 10d | 2023-09-20 | 2023-10-03 | 119 | 0d |  | João; Maria; Henk; Laura | 320h |
| 122 | 1.4.2.4.2 | Testes de homologação pelo usuário | 20d | 2023-10-04 | 2023-10-31 | 121 | 0d |  | Dono do produto (representante dos usuários) | 160h |
| 123 | 1.4.2.4.3 | Correção de BUGs | 30d | 2023-09-20 | 2023-10-31 | 119 | 55d |  | Lucas; Rene; Rubia; Lima; Bianca; Pedro; Rupert | 1680h |
| 124 | 1.4.2.4.4 | Registro da aprovação final do patrocinador do projeto | 1d | 2023-11-01 | 2023-11-01 | 122 | 0d |  | Parducci | 8h |
| 125 | 1.4.2.5 | **Fase de Implantação** | 54d | 2023-11-02 | 2024-01-16 |  | 0d |  |  | 560h |
| 126 | 1.4.2.5.1 | Treinamento de usuários | 50d | 2023-11-02 | 2024-01-10 | 124 | 0d |  | Henk | 400h |
| 127 | 1.4.2.5.2 | Treinamento da equipe de operações e suporte de TI | 10d | 2023-11-02 | 2023-11-15 | 124 | 40d |  | Laura | 80h |
| 128 | 1.4.2.5.3 | Instalar nova aplicação | 1d | 2024-01-11 | 2024-01-11 | 126, 127 | 0d |  | Rodrigues; Pereira; Mariano | 24h |
| 129 | 1.4.2.5.4 | Migrar dados do sistema legado | 1d | 2024-01-12 | 2024-01-12 | 128 | 0d |  | Rodrigues; Pereira; Mariano | 24h |
| 130 | 1.4.2.5.5 | Desativar o sistema antigo (legado) | 1d | 2024-01-15 | 2024-01-15 | 129 | 0d |  | Rodrigues; Pereira; Mariano | 24h |
| 131 | 1.4.2.5.6 | Emitir termo de aceite e encerramento do projeto | 1d | 2024-01-16 | 2024-01-16 | 130 | 0d |  | Parducci | 8h |

| ID | WBS | Task | Duration | Start | Finish | Predecessors | Total slack | Constraint | Resources | Work |
| --- | --- | --- | --- | --- | --- | --- | --- | --- | --- | --- |
| 132 | 1.4.2.6 | **Fase de Integração** | 1d? | 2023-03-14 | 2023-03-14 |  | 220d |  |  |  |
| 133 | 1.4.2.6.1 | Ajustar programas para comunicarem entre si, integrando informações | 1d? | 2023-03-14 | 2023-03-14 |  | 220d |  |  |  |
| 134 | 1.4.2.6.2 | Testar integrações | 1d? | 2023-03-14 | 2023-03-14 |  | 220d |  |  |  |
| 135 | 1.4.2.6.3 | Liberar o uso do sistema integrado | 1d? | 2023-03-14 | 2023-03-14 |  | 220d |  |  |  |
| 136 | 1.4.2.6.4 | Treinamento complementar para ensinar o trabalho integrado com uso do sistema | 1d? | 2023-03-14 | 2023-03-14 |  | 220d |  |  |  |
| 137 | 1.4.2.6.5 | Emitir aceite da integração | 1d? | 2023-03-14 | 2023-03-14 |  | 220d |  |  |  |
| 138 | 1.4.3 | **Transação de pagamento de salário e comissão** | 221d? | 2023-03-14 | 2024-01-16 |  | 0d |  |  | 9024h |
| 139 | 1.4.3.1 | **Fase de Análise** | 27d | 2023-03-20 | 2023-04-25 |  | 0d |  |  | 296h |
| 140 | 1.4.3.1.1 | Registrar objetivos de negócio | 5d | 2023-03-20 | 2023-03-24 |  | 0d | start no earlier than 2023-03-20 | Maria; João | 80h |
| 141 | 1.4.3.1.2 | Estudar sistemas existentes | 15d | 2023-03-27 | 2023-04-14 | 140 | 0d | start no earlier than 2023-03-20 | Maria | 120h |
| 142 | 1.4.3.1.3 | Listar requisitos do sistema | 3d | 2023-04-17 | 2023-04-19 | 141 | 0d |  | João; Maria | 48h |
| 143 | 1.4.3.1.4 | Analisar a viabilidade | 1d | 2023-04-20 | 2023-04-20 | 142 | 0d |  | João; Maria | 16h |
| 144 | 1.4.3.1.5 | Priorizar requisitos | 1d | 2023-04-21 | 2023-04-21 | 143 | 0d |  | João; Maria | 16h |
| 145 | 1.4.3.1.6 | Documentar a visão de escopo do projeto | 2d | 2023-04-24 | 2023-04-25 | 144 | 0d |  | Maria | 16h |
| 146 | 1.4.3.2 | **Fase de Desenho (fazer protótipo)** | 45d | 2023-04-26 | 2023-06-27 |  | 0d |  |  | 720h |
| 147 | 1.4.3.2.1 | Desenho lógico | 30d | 2023-04-26 | 2023-06-06 | 145 | 0d |  | Henk; Laura | 480h |
| 148 | 1.4.3.2.2 | Desenho físico | 15d | 2023-06-07 | 2023-06-27 | 147 | 0d |  | Henk; Laura | 240h |
| 149 | 1.4.3.3 | **Fase de Implementação/Construção** | 60d | 2023-06-28 | 2023-09-19 |  | 0d |  |  | 5280h |
| 150 | 1.4.3.3.1 | Construir banco de dados | 60d | 2023-06-28 | 2023-09-19 | 148 | 85d |  | Pedro; Bianca; Rupert | 1440h |
| 151 | 1.4.3.3.2 | Construir software de aplicação | 60d | 2023-06-28 | 2023-09-19 | 148 | 85d |  | Lucas; Rene; Rubia; Lima | 1920h |
| 152 | 1.4.3.3.3 | Testes unitários de programas | 60d | 2023-06-28 | 2023-09-19 | 148 | 0d |  | Lucas; Rene; Rubia; Lima | 1920h |
| 153 | 1.4.3.4 | **Fase de Teste** | 31d | 2023-09-20 | 2023-11-01 |  | 0d |  |  | 2168h |
| 154 | 1.4.3.4.1 | Testes integrados feitos por TI | 10d | 2023-09-20 | 2023-10-03 | 152 | 0d |  | João; Maria; Henk; Laura | 320h |
| 155 | 1.4.3.4.2 | Testes de homologação pelo usuário | 20d | 2023-10-04 | 2023-10-31 | 154 | 0d |  | Dono do produto (representante dos usuários) | 160h |
| 156 | 1.4.3.4.3 | Correção de BUGs | 30d | 2023-09-20 | 2023-10-31 | 152 | 55d |  | Lucas; Rene; Rubia; Lima; Bianca; Pedro; Rupert | 1680h |
| 157 | 1.4.3.4.4 | Registro da aprovação final do patrocinador do projeto | 1d | 2023-11-01 | 2023-11-01 | 155 | 0d |  | Parducci | 8h |

| ID | WBS | Task | Duration | Start | Finish | Predecessors | Total slack | Resources | Work |
| --- | --- | --- | --- | --- | --- | --- | --- | --- | --- |
| 158 | 1.4.3.5 | **Fase de Implantação** | 54d | 2023-11-02 | 2024-01-16 |  | 0d |  | 560h |
| 159 | 1.4.3.5.1 | Treinamento de usuários | 50d | 2023-11-02 | 2024-01-10 | 157 | 0d | Henk | 400h |
| 160 | 1.4.3.5.2 | Treinamento da equipe de operações e suporte de TI | 10d | 2023-11-02 | 2023-11-15 | 157 | 40d | Laura | 80h |
| 161 | 1.4.3.5.3 | Instalar nova aplicação | 1d | 2024-01-11 | 2024-01-11 | 159, 160 | 0d | Rodrigues; Pereira; Mariano | 24h |
| 162 | 1.4.3.5.4 | Migrar dados do sistema legado | 1d | 2024-01-12 | 2024-01-12 | 161 | 0d | Rodrigues; Pereira; Mariano | 24h |
| 163 | 1.4.3.5.5 | Desativar o sistema antigo (legado) | 1d | 2024-01-15 | 2024-01-15 | 162 | 0d | Rodrigues; Pereira; Mariano | 24h |
| 164 | 1.4.3.5.6 | Emitir termo de aceite e encerramento do projeto | 1d | 2024-01-16 | 2024-01-16 | 163 | 0d | Parducci | 8h |
| 165 | 1.4.3.6 | **Fase de Integração** | 1d? | 2023-03-14 | 2023-03-14 |  | 220d |  |  |
| 166 | 1.4.3.6.1 | Ajustar programas para comunicarem entre si, integrando informações | 1d? | 2023-03-14 | 2023-03-14 |  | 220d |  |  |
| 167 | 1.4.3.6.2 | Testar integrações | 1d? | 2023-03-14 | 2023-03-14 |  | 220d |  |  |
| 168 | 1.4.3.6.3 | Liberar o uso do sistema integrado | 1d? | 2023-03-14 | 2023-03-14 |  | 220d |  |  |
| 169 | 1.4.3.6.4 | Treinamento complementar para ensinar o trabalho integrado com uso do sistema | 1d? | 2023-03-14 | 2023-03-14 |  | 220d |  |  |
| 170 | 1.4.3.6.5 | Emitir aceite da integração | 1d? | 2023-03-14 | 2023-03-14 |  | 220d |  |  |
