# CronogramaProjetoIncremental

Schedule from MS Project, 2023-03-14 to 2024-01-16.

## Calendars

- Standard: Mon-Fri 08:00-12:00, 13:00-17:00; Sat-Sun off.

## Resources

| Resource |
| --- |
| Maria; Joao |
| Maria |
| João |
| Henk |
| Laura |
| Pedro |
| Bianca |
| Rupert |
| Lucas |
| Rene |
| Rubia |
| Lima |
| Dono do produto (representante dos usuários) |
| Parducci |
| Rodrigues |
| Pereira |
| Mariano |

## Schedule

| ID | WBS | Task | Duration | Start | Finish | Predecessors | Total slack | Constraint | Resources | Work |
| --- | --- | --- | --- | --- | --- | --- | --- | --- | --- | --- |
| 1 | 1 | **Projeto Novo Sistema Comercial (usando modelo Incremental)** | 221d? | 2023-03-14 | 2024-01-16 |  | 0d |  |  | 27072h |
| 2 | 1.1 | **Fase de Estudo** | 1d? | 2023-03-14 | 2023-03-14 |  | 220d |  |  |  |
| 3 | 1.1.1 | Avaliar a possibilidade de modularização do projeto | 1d? | 2023-03-14 | 2023-03-14 |  | 220d |  |  |  |
| 4 | 1.1.2 | Definir os módulos/frentes de projeto | 1d? | 2023-03-14 | 2023-03-14 |  | 220d |  |  |  |
| 5 | 1.2 | **Módulo Vendas** | 221d? | 2023-03-14 | 2024-01-16 |  | 0d |  |  | 9024h |
| 6 | 1.2.1 | **Fase de Análise** | 27d | 2023-03-20 | 2023-04-25 |  | 0d |  |  | 296h |
| 7 | 1.2.1.1 | Registrar objetivos de negócio | 5d | 2023-03-20 | 2023-03-24 |  | 0d | start no earlier than 2023-03-20 | Maria; João | 80h |
| 8 | 1.2.1.2 | Estudar sistemas existentes | 15d | 2023-03-27 | 2023-04-14 | 7 | 0d | start no earlier than 2023-03-20 | Maria | 120h |
| 9 | 1.2.1.3 | Listar requisitos do sistema | 3d | 2023-04-17 | 2023-04-19 | 8 | 0d |  | João; Maria | 48h |
| 10 | 1.2.1.4 | Analisar a viabilidade | 1d | 2023-04-20 | 2023-04-20 | 9 | 0d |  | João; Maria | 16h |
| 11 | 1.2.1.5 | Priorizar requisitos | 1d | 2023-04-21 | 2023-04-21 | 10 | 0d |  | João; Maria | 16h |
| 12 | 1.2.1.6 | Documentar a visão de escopo do projeto | 2d | 2023-04-24 | 2023-04-25 | 11 | 0d |  | Maria | 16h |
| 13 | 1.2.2 | **Fase de Desenho** | 45d | 2023-04-26 | 2023-06-27 |  | 0d |  |  | 720h |
| 14 | 1.2.2.1 | Desenho lógico | 30d | 2023-04-26 | 2023-06-06 | 12 | 0d |  | Henk; Laura | 480h |
| 15 | 1.2.2.2 | Desenho físico | 15d | 2023-06-07 | 2023-06-27 | 14 | 0d |  | Henk; Laura | 240h |
| 16 | 1.2.3 | **Fase de Implementação/Construção** | 60d | 2023-06-28 | 2023-09-19 |  | 0d |  |  | 5280h |
| 17 | 1.2.3.1 | Construir banco de dados | 60d | 2023-06-28 | 2023-09-19 | 15 | 85d |  | Pedro; Bianca; Rupert | 1440h |
| 18 | 1.2.3.2 | Construir software de aplicação | 60d | 2023-06-28 | 2023-09-19 | 15 | 85d |  | Lucas; Rene; Rubia; Lima | 1920h |
| 19 | 1.2.3.3 | Testes unitários de programas | 60d | 2023-06-28 | 2023-09-19 | 15 | 0d |  | Lucas; Rene; Rubia; Lima | 1920h |
| 20 | 1.2.4 | **Fase de Teste** | 31d | 2023-09-20 | 2023-11-01 |  | 0d |  |  | 2168h |
| 21 | 1.2.4.1 | Testes integrados feitos por TI | 10d | 2023-09-20 | 2023-10-03 | 19 | 0d |  | João; Maria; Henk; Laura | 320h |
| 22 | 1.2.4.2 | Testes de homologação pelo usuário | 20d | 2023-10-04 | 2023-10-31 | 21 | 0d |  | Dono do produto (representante dos usuários) | 160h |
| 23 | 1.2.4.3 | Correção de BUGs | 30d | 2023-09-20 | 2023-10-31 | 19 | 55d |  | Lucas; Rene; Rubia; Lima; Bianca; Pedro; Rupert | 1680h |
| 24 | 1.2.4.4 | Registro da aprovação final do patrocinador do projeto | 1d | 2023-11-01 | 2023-11-01 | 22 | 0d |  | Parducci | 8h |

| ID | WBS | Task | Duration | Start | Finish | Predecessors | Total slack | Constraint | Resources | Work |
| --- | --- | --- | --- | --- | --- | --- | --- | --- | --- | --- |
| 25 | 1.2.5 | **Fase de Implantação** | 54d | 2023-11-02 | 2024-01-16 |  | 0d |  |  | 560h |
| 26 | 1.2.5.1 | Treinamento de usuários | 50d | 2023-11-02 | 2024-01-10 | 24 | 0d |  | Henk | 400h |
| 27 | 1.2.5.2 | Treinamento da equipe de operações e suporte de TI | 10d | 2023-11-02 | 2023-11-15 | 24 | 40d |  | Laura | 80h |
| 28 | 1.2.5.3 | Instalar nova aplicação | 1d | 2024-01-11 | 2024-01-11 | 26, 27 | 0d |  | Rodrigues; Pereira; Mariano | 24h |
| 29 | 1.2.5.4 | Migrar dados do sistema legado | 1d | 2024-01-12 | 2024-01-12 | 28 | 0d |  | Rodrigues; Pereira; Mariano | 24h |
| 30 | 1.2.5.5 | Desativar o sistema antigo (legado) | 1d | 2024-01-15 | 2024-01-15 | 29 | 0d |  | Rodrigues; Pereira; Mariano | 24h |
| 31 | 1.2.5.6 | Emitir termo de aceite e encerramento do projeto | 1d | 2024-01-16 | 2024-01-16 | 30 | 0d |  | Parducci | 8h |
| 32 | 1.2.6 | **Fase de Integração** | 1d? | 2023-03-14 | 2023-03-14 |  | 220d |  |  |  |
| 33 | 1.2.6.1 | Ajustar programas para comunicarem entre si, integrando informações | 1d? | 2023-03-14 | 2023-03-14 |  | 220d |  |  |  |
| 34 | 1.2.6.2 | Testar integrações | 1d? | 2023-03-14 | 2023-03-14 |  | 220d |  |  |  |
| 35 | 1.2.6.3 | Liberar o uso do sistema integrado | 1d? | 2023-03-14 | 2023-03-14 |  | 220d |  |  |  |
| 36 | 1.2.6.4 | Treinamento complementar para ensinar o trabalho integrado com uso do sistema | 1d? | 2023-03-14 | 2023-03-14 |  | 220d |  |  |  |
| 37 | 1.2.6.5 | Emitir aceite da integração | 1d? | 2023-03-14 | 2023-03-14 |  | 220d |  |  |  |
| 38 | 1.3 | **Módulo Estoques** | 221d? | 2023-03-14 | 2024-01-16 |  | 0d |  |  | 9024h |
| 39 | 1.3.1 | **Fase de Análise** | 27d | 2023-03-20 | 2023-04-25 |  | 0d |  |  | 296h |
| 40 | 1.3.1.1 | Registrar objetivos de negócio | 5d | 2023-03-20 | 2023-03-24 |  | 0d | start no earlier than 2023-03-20 | Maria; João | 80h |
| 41 | 1.3.1.2 | Estudar sistemas existentes | 15d | 2023-03-27 | 2023-04-14 | 40 | 0d | start no earlier than 2023-03-20 | Maria | 120h |
| 42 | 1.3.1.3 | Listar requisitos do sistema | 3d | 2023-04-17 | 2023-04-19 | 41 | 0d |  | João; Maria | 48h |
| 43 | 1.3.1.4 | Analisar a viabilidade | 1d | 2023-04-20 | 2023-04-20 | 42 | 0d |  | João; Maria | 16h |
| 44 | 1.3.1.5 | Priorizar requisitos | 1d | 2023-04-21 | 2023-04-21 | 43 | 0d |  | João; Maria | 16h |
| 45 | 1.3.1.6 | Documentar a visão de escopo do projeto | 2d | 2023-04-24 | 2023-04-25 | 44 | 0d |  | Maria | 16h |
| 46 | 1.3.2 | **Fase de Desenho** | 45d | 2023-04-26 | 2023-06-27 |  | 0d |  |  | 720h |
| 47 | 1.3.2.1 | Desenho lógico | 30d | 2023-04-26 | 2023-06-06 | 45 | 0d |  | Henk; Laura | 480h |
| 48 | 1.3.2.2 | Desenho físico | 15d | 2023-06-07 | 2023-06-27 | 47 | 0d |  | Henk; Laura | 240h |

| ID | WBS | Task | Duration | Start | Finish | Predecessors | Total slack | Constraint | Resources | Work |
| --- | --- | --- | --- | --- | --- | --- | --- | --- | --- | --- |
| 49 | 1.3.3 | **Fase de Implementação/Construção** | 60d | 2023-06-28 | 2023-09-19 |  | 0d |  |  | 5280h |
| 50 | 1.3.3.1 | Construir banco de dados | 60d | 2023-06-28 | 2023-09-19 | 48 | 85d |  | Pedro; Bianca; Rupert | 1440h |
| 51 | 1.3.3.2 | Construir software de aplicação | 60d | 2023-06-28 | 2023-09-19 | 48 | 85d |  | Lucas; Rene; Rubia; Lima | 1920h |
| 52 | 1.3.3.3 | Testes unitários de programas | 60d | 2023-06-28 | 2023-09-19 | 48 | 0d |  | Lucas; Rene; Rubia; Lima | 1920h |
| 53 | 1.3.4 | **Fase de Teste** | 31d | 2023-09-20 | 2023-11-01 |  | 0d |  |  | 2168h |
| 54 | 1.3.4.1 | Testes integrados feitos por TI | 10d | 2023-09-20 | 2023-10-03 | 52 | 0d |  | João; Maria; Henk; Laura | 320h |
| 55 | 1.3.4.2 | Testes de homologação pelo usuário | 20d | 2023-10-04 | 2023-10-31 | 54 | 0d |  | Dono do produto (representante dos usuários) | 160h |
| 56 | 1.3.4.3 | Correção de BUGs | 30d | 2023-09-20 | 2023-10-31 | 52 | 55d |  | Lucas; Rene; Rubia; Lima; Bianca; Pedro; Rupert | 1680h |
| 57 | 1.3.4.4 | Registro da aprovação final do patrocinador do projeto | 1d | 2023-11-01 | 2023-11-01 | 55 | 0d |  | Parducci | 8h |
| 58 | 1.3.5 | **Fase de Implantação** | 54d | 2023-11-02 | 2024-01-16 |  | 0d |  |  | 560h |
| 59 | 1.3.5.1 | Treinamento de usuários | 50d | 2023-11-02 | 2024-01-10 | 57 | 0d |  | Henk | 400h |
| 60 | 1.3.5.2 | Treinamento da equipe de operações e suporte de TI | 10d | 2023-11-02 | 2023-11-15 | 57 | 40d |  | Laura | 80h |
| 61 | 1.3.5.3 | Instalar nova aplicação | 1d | 2024-01-11 | 2024-01-11 | 59, 60 | 0d |  | Rodrigues; Pereira; Mariano | 24h |
| 62 | 1.3.5.4 | Migrar dados do sistema legado | 1d | 2024-01-12 | 2024-01-12 | 61 | 0d |  | Rodrigues; Pereira; Mariano | 24h |
| 63 | 1.3.5.5 | Desativar o sistema antigo (legado) | 1d | 2024-01-15 | 2024-01-15 | 62 | 0d |  | Rodrigues; Pereira; Mariano | 24h |
| 64 | 1.3.5.6 | Emitir termo de aceite e encerramento do projeto | 1d | 2024-01-16 | 2024-01-16 | 63 | 0d |  | Parducci | 8h |
| 65 | 1.3.6 | **Fase de Integração** | 1d? | 2023-03-14 | 2023-03-14 |  | 220d |  |  |  |
| 66 | 1.3.6.1 | Ajustar programas para comunicarem entre si, integrando informações | 1d? | 2023-03-14 | 2023-03-14 |  | 220d |  |  |  |
| 67 | 1.3.6.2 | Testar integrações | 1d? | 2023-03-14 | 2023-03-14 |  | 220d |  |  |  |
| 68 | 1.3.6.3 | Liberar o uso do sistema integrado | 1d? | 2023-03-14 | 2023-03-14 |  | 220d |  |  |  |
| 69 | 1.3.6.4 | Treinamento complementar para ensinar o trabalho integrado com uso do sistema | 1d? | 2023-03-14 | 2023-03-14 |  | 220d |  |  |  |
| 70 | 1.3.6.5 | Emitir aceite da integração | 1d? | 2023-03-14 | 2023-03-14 |  | 220d |  |  |  |
| 71 | 1.4 | **Módulo RH** | 221d? | 2023-03-14 | 2024-01-16 |  | 0d |  |  | 9024h |
| 72 | 1.4.1 | **Fase de Análise** | 27d | 2023-03-20 | 2023-04-25 |  | 0d |  |  | 296h |
| 73 | 1.4.1.1 | Registrar objetivos de negócio | 5d | 2023-03-20 | 2023-03-24 |  | 0d | start no earlier than 2023-03-20 | Maria; João | 80h |
| 74 | 1.4.1.2 | Estudar sistemas existentes | 15d | 2023-03-27 | 2023-04-14 | 73 | 0d | start no earlier than 2023-03-20 | Maria | 120h |
| 75 | 1.4.1.3 | Listar requisitos do sistema | 3d | 2023-04-17 | 2023-04-19 | 74 | 0d |  | João; Maria | 48h |
| 76 | 1.4.1.4 | Analisar a viabilidade | 1d | 2023-04-20 | 2023-04-20 | 75 | 0d |  | João; Maria | 16h |
| 77 | 1.4.1.5 | Priorizar requisitos | 1d | 2023-04-21 | 2023-04-21 | 76 | 0d |  | João; Maria | 16h |
| 78 | 1.4.1.6 | Documentar a visão de escopo do projeto | 2d | 2023-04-24 | 2023-04-25 | 77 | 0d |  | Maria | 16h |

| ID | WBS | Task | Duration | Start | Finish | Predecessors | Total slack | Resources | Work |
| --- | --- | --- | --- | --- | --- | --- | --- | --- | --- |
| 79 | 1.4.2 | **Fase de Desenho** | 45d | 2023-04-26 | 2023-06-27 |  | 0d |  | 720h |
| 80 | 1.4.2.1 | Desenho lógico | 30d | 2023-04-26 | 2023-06-06 | 78 | 0d | Henk; Laura | 480h |
| 81 | 1.4.2.2 | Desenho físico | 15d | 2023-06-07 | 2023-06-27 | 80 | 0d | Henk; Laura | 240h |
| 82 | 1.4.3 | **Fase de Implementação/Construção** | 60d | 2023-06-28 | 2023-09-19 |  | 0d |  | 5280h |
| 83 | 1.4.3.1 | Construir banco de dados | 60d | 2023-06-28 | 2023-09-19 | 81 | 85d | Pedro; Bianca; Rupert | 1440h |
| 84 | 1.4.3.2 | Construir software de aplicação | 60d | 2023-06-28 | 2023-09-19 | 81 | 85d | Lucas; Rene; Rubia; Lima | 1920h |
| 85 | 1.4.3.3 | Testes unitários de programas | 60d | 2023-06-28 | 2023-09-19 | 81 | 0d | Lucas; Rene; Rubia; Lima | 1920h |
| 86 | 1.4.4 | **Fase de Teste** | 31d | 2023-09-20 | 2023-11-01 |  | 0d |  | 2168h |
| 87 | 1.4.4.1 | Testes integrados feitos por TI | 10d | 2023-09-20 | 2023-10-03 | 85 | 0d | João; Maria; Henk; Laura | 320h |
| 88 | 1.4.4.2 | Testes de homologação pelo usuário | 20d | 2023-10-04 | 2023-10-31 | 87 | 0d | Dono do produto (representante dos usuários) | 160h |
| 89 | 1.4.4.3 | Correção de BUGs | 30d | 2023-09-20 | 2023-10-31 | 85 | 55d | Lucas; Rene; Rubia; Lima; Bianca; Pedro; Rupert | 1680h |
| 90 | 1.4.4.4 | Registro da aprovação final do patrocinador do projeto | 1d | 2023-11-01 | 2023-11-01 | 88 | 0d | Parducci | 8h |
| 91 | 1.4.5 | **Fase de Implantação** | 54d | 2023-11-02 | 2024-01-16 |  | 0d |  | 560h |
| 92 | 1.4.5.1 | Treinamento de usuários | 50d | 2023-11-02 | 2024-01-10 | 90 | 0d | Henk | 400h |
| 93 | 1.4.5.2 | Treinamento da equipe de operações e suporte de TI | 10d | 2023-11-02 | 2023-11-15 | 90 | 40d | Laura | 80h |
| 94 | 1.4.5.3 | Instalar nova aplicação | 1d | 2024-01-11 | 2024-01-11 | 92, 93 | 0d | Rodrigues; Pereira; Mariano | 24h |
| 95 | 1.4.5.4 | Migrar dados do sistema legado | 1d | 2024-01-12 | 2024-01-12 | 94 | 0d | Rodrigues; Pereira; Mariano | 24h |
| 96 | 1.4.5.5 | Desativar o sistema antigo (legado) | 1d | 2024-01-15 | 2024-01-15 | 95 | 0d | Rodrigues; Pereira; Mariano | 24h |
| 97 | 1.4.5.6 | Emitir termo de aceite e encerramento do projeto | 1d | 2024-01-16 | 2024-01-16 | 96 | 0d | Parducci | 8h |
| 98 | 1.4.6 | **Fase de Integração** | 1d? | 2023-03-14 | 2023-03-14 |  | 220d |  |  |
| 99 | 1.4.6.1 | Ajustar programas para comunicarem entre si, integrando informações | 1d? | 2023-03-14 | 2023-03-14 |  | 220d |  |  |
| 100 | 1.4.6.2 | Testar integrações | 1d? | 2023-03-14 | 2023-03-14 |  | 220d |  |  |
| 101 | 1.4.6.3 | Liberar o uso do sistema integrado | 1d? | 2023-03-14 | 2023-03-14 |  | 220d |  |  |
| 102 | 1.4.6.4 | Treinamento complementar para ensinar o trabalho integrado com uso do sistema | 1d? | 2023-03-14 | 2023-03-14 |  | 220d |  |  |
| 103 | 1.4.6.5 | Emitir aceite da integração | 1d? | 2023-03-14 | 2023-03-14 |  | 220d |  |  |
